# PacMan

How a schedule from MS Project changed from version to version. A marks actual dates.

## Version 1 (saved 2022-12-09)

Note of the change: Documentazione - test e consuntivo

| ID | WBS | Task | Duration | Start | Finish | Predecessors | Total float | Constraint |
| --- | --- | --- | --- | --- | --- | --- | --- | --- |
| 1 | 1 | **Unity's Pac-Man** | 8.35d | 2022-09-09 | 2022-12-23 |  | 0d |  |
| 2 | 1.1 | **Analisi** | 1.44d | 2022-09-09 | 2022-09-23 |  | 0.92d |  |
| 3 |  | Stesura QdC | 1.5h | 2022-09-09 | 2022-09-09 |  | 0.92d |  |
| 4 |  | Gantt preventivo | 3h | 2022-09-09 | 2022-09-16 | 3 | 0.92d |  |
| 5 |  | Use Case | 2h | 2022-09-16 | 2022-09-16 | 4 | 7.54d |  |
| 6 |  | Requisiti | 3h | 2022-09-16 | 2022-09-16 | 4 | 0.92d |  |
| 7 |  | Test case | 3h | 2022-09-16 | 2022-09-23 | 6 | 0.92d |  |
| 8 |  | Abstract | 1h | 2022-09-23 | 2022-09-23 | 7 | 6.92d |  |
| 9 | 1.2 | **Progettazione** | 0.62d | 2022-09-23 | 2022-09-30 |  | 0.92d |  |
| 10 |  | Design interfacce | 3h | 2022-09-23 | 2022-09-30 | 7 | 0.92d |  |
| 11 |  | Diagramma delle classi | 2h | 2022-09-30 | 2022-09-30 | 10 | 0.92d |  |
| 12 | 1.3 | **Implementazione** | 5.62d | 2022-09-30 | 2022-12-16 |  | 1.04d |  |
| 13 |  | Design personaggi | 2h | 2022-09-30 | 2022-10-07 | 11 | 0.92d |  |
| 14 |  | Algoritmo generazione mappa | 6h | 2022-10-07 | 2022-10-14 | 13 | 0.92d |  |
| 15 |  | AI fantasma | 6h | 2022-10-14 | 2022-10-21 | 13, 14 | 0.92d |  |
| 16 |  | Controlli movimento Pac-Man | 4h | 2022-10-21 | 2022-10-28 | 15 | 0.92d |  |
| 17 |  | Piazzamento pillole | 2h | 2022-10-28 | 2022-11-11 | 16 | 0.92d |  |
| 18 |  | Animazioni personaggi | 2h | 2022-11-11 | 2022-11-11 | 17 | 0.92d |  |
| 19 |  | Checkpoint | 0d | 2022-11-11 | 2022-11-11 | 18 | 0.92d |  |
| 20 |  | Perdita vita e respawn | 3h | 2022-11-11 | 2022-11-18 | 19 | 0.92d |  |
| 21 |  | Super-pillole | 6h | 2022-11-18 | 2022-11-25 | 20 | 0.92d |  |
| 22 |  | Grafica pagina di gioco | 3h | 2022-11-25 | 2022-12-02 | 21 | 0.92d |  |
| 23 |  | Grafica pagine di menu | 4h | 2022-11-25 | 2022-12-02 | 21 | 1.79d |  |
| 24 |  | Vincita gioco e creazione nuova mappa | 2h | 2022-12-02 | 2022-12-02 | 23 | 1.79d |  |
| 25 |  | Game over | 2h | 2022-12-02 | 2022-12-02 | 22 | 0.92d |  |
| 26 |  | Pagina modifica parametri | 6h | 2022-12-02 | 2022-12-09 | 25 | 0.92d |  |
| 27 |  | Salvataggio punteggio | 0.5h | 2022-12-09 | 2022-12-16 | 25, 26 | 1.1d | start no earlier than 2022-09-16 |
| 28 |  | Imparare unity | 10h | 2022-09-30 | 2022-12-16 | 10 | 0.17d | start no earlier than 2022-09-29 |
| 29 | 1.4 | **Test** | 0.25d | 2022-12-09 | 2022-12-16 |  | 0.92d |  |
| 30 |  | Test | 2h | 2022-12-09 | 2022-12-16 | 26 | 0.92d |  |
| 31 |  | Risolvere problemi | 0h | 2022-12-16 | 2022-12-16 | 30 | 0.92d |  |
| 32 |  | Documentazione | 18h | 2022-09-30 | 2022-12-23 |  | 0d | start no earlier than 2022-09-26 |

## Version 2 (saved 2022-12-09)

Note of the change: Diario

Last finish stays 2022-12-23.

Changed:

| ID | Task | Start | Finish | Duration | Total float | Predecessors | Other |
| --- | --- | --- | --- | --- | --- | --- | --- |
| 1 | **Unity's Pac-Man** | 2022-09-09 → 2022-09-09 09:00 | 2022-12-23 → 2022-12-23 14:45 |  |  |  | baseline start 2022-09-09 → 2022-09-09 09:00; baseline finish 2022-12-23 → 2022-12-23 14:45 |
| 2 | **Analisi** | 2022-09-09 → 2022-09-09 09:00 | 2022-09-23 → 2022-09-23 13:25 |  | 0.92d → 1.42d |  | baseline start 2022-09-09 → 2022-09-09 09:00; baseline finish 2022-09-23 → 2022-09-23 13:25 |
| 3 | Stesura QdC | 2022-09-09 → 2022-09-09 09:00 | 2022-09-09 → 2022-09-09 10:45 |  |  |  | baseline start 2022-09-09 → 2022-09-09 09:00; baseline finish 2022-09-09 → 2022-09-09 10:45 |
| 4 | Gantt preventivo | 2022-09-09 → 2022-09-09 10:45 | 2022-09-16 → 2022-09-16 09:00 |  |  |  | baseline start 2022-09-09 → 2022-09-09 10:45; baseline finish 2022-09-16 → 2022-09-16 09:00 |
| 5 | Use Case | 2022-09-16 → 2022-09-16 09:00 | 2022-09-16 → 2022-09-16 11:15 |  |  |  | baseline start 2022-09-16 → 2022-09-16 09:00; baseline finish 2022-09-16 → 2022-09-16 11:15 |
| 6 | Requisiti | 2022-09-16 → 2022-09-16 09:00 | 2022-09-16 → 2022-09-16 13:55 |  |  |  | baseline start 2022-09-16 → 2022-09-16 09:00; baseline finish 2022-09-16 → 2022-09-16 13:55 |
| 7 | Test case | 2022-09-16 → 2022-09-16 13:55 | 2022-09-23 → 2022-09-23 10:45 |  |  |  | baseline start 2022-09-16 → 2022-09-16 13:55; baseline finish 2022-09-23 → 2022-09-23 10:45 |
| 8 | Abstract | 2022-09-23 → 2022-09-23 10:45 | 2022-09-23 → 2022-09-23 13:25 |  |  |  | baseline start 2022-09-23 → 2022-09-23 10:45; baseline finish 2022-09-23 → 2022-09-23 13:25 |
| 9 | **Progettazione** | 2022-09-23 → 2022-09-23 10:45 | 2022-09-30 → 2022-09-30 11:15 |  | 0.92d → 1.42d |  | baseline start 2022-09-23 → 2022-09-23 10:45; baseline finish 2022-09-30 → 2022-09-30 11:15 |
| 10 | Design interfacce | 2022-09-23 → 2022-09-23 10:45 | 2022-09-30 → 2022-09-30 09:00 |  |  |  | baseline start 2022-09-23 → 2022-09-23 10:45; baseline finish 2022-09-30 → 2022-09-30 09:00 |
| 11 | Diagramma delle classi | 2022-09-30 → 2022-09-30 09:00 | 2022-09-30 → 2022-09-30 11:15 |  |  |  | baseline start 2022-09-30 → 2022-09-30 09:00; baseline finish 2022-09-30 → 2022-09-30 11:15 |
| 12 | **Implementazione** | 2022-09-30 → 2022-09-30 09:00 | 2022-12-16 → 2022-12-09 09:00 (-7d) | 5.62d → 5.06d | 1.04d → 1.6d |  | baseline start 2022-09-30 → 2022-09-30 09:00; baseline finish 2022-12-16 → 2022-12-16 09:00 |
| 13 | Design personaggi | 2022-09-30 → 2022-09-30 11:15 | 2022-10-07 → 2022-10-07 08:30 |  |  |  | baseline start 2022-09-30 → 2022-09-30 11:15; baseline finish 2022-10-07 → 2022-10-07 08:30 |
| 14 | Algoritmo generazione mappa | 2022-10-07 → 2022-10-07 08:30 | 2022-10-14 → 2022-10-14 10:15 |  |  |  | baseline start 2022-10-07 → 2022-10-07 08:30; baseline finish 2022-10-14 → 2022-10-14 10:15 |
| 15 | AI fantasma | 2022-10-14 → 2022-10-14 10:15 | 2022-10-21 → 2022-10-21 13:25 |  |  |  | baseline start 2022-10-14 → 2022-10-14 13:55; baseline finish 2022-10-28 → 2022-10-28 09:00 |
| 16 | Controlli movimento Pac-Man | 2022-10-21 → 2022-10-21 13:25 | 2022-10-28 → 2022-10-28 11:15 |  |  |  | baseline start 2022-10-14 → 2022-10-14 13:55; baseline finish 2022-10-21 → 2022-10-21 13:25 |
| 17 | Piazzamento pillole | 2022-10-28 → 2022-10-21 13:25 (-7d) | 2022-11-11 → 2022-10-28 09:00 (-14d) |  | 0.92d → 1.42d | 16 → 15 | baseline start 2022-10-14 → 2022-10-14 10:15; baseline finish 2022-10-14 → 2022-10-14 13:55 |
| 18 | Animazioni personaggi | 2022-11-11 → 2022-10-28 09:00 (-14d) | 2022-11-11 → 2022-10-28 11:15 (-14d) |  | 0.92d → 1.42d |  | baseline start 2022-10-07 → 2022-10-07 08:30; baseline finish 2022-10-07 → 2022-10-07 10:45 |
| 19 | Checkpoint | 2022-11-11 → 2022-10-28 11:15 (-14d) | 2022-11-11 → 2022-10-28 11:15 (-14d) |  | 0.92d → 1.42d |  | baseline start 2022-10-28 → 2022-10-28 09:00; baseline finish 2022-10-28 → 2022-10-28 09:00 |
| 20 | Perdita vita e respawn | 2022-11-11 → 2022-10-28 11:15 (-14d) | 2022-11-18 → 2022-11-11 09:30 (-7d) |  | 0.92d → 1.42d |  | baseline start 2022-10-28 → 2022-10-28 09:00; baseline finish 2022-10-28 → 2022-10-28 13:55 |
| 21 | Super-pillole | 2022-11-18 → 2022-11-11 09:30 (-7d) | 2022-11-25 → 2022-11-18 11:15 (-7d) |  | 0.92d → 1.42d |  | baseline start 2022-10-28 → 2022-10-28 09:00; baseline finish 2022-11-11 → 2022-11-11 10:45 |
| 22 | Grafica pagina di gioco | 2022-11-25 → 2022-11-18 11:15 (-7d) | 2022-12-02 → 2022-11-25 09:30 (-7d) |  | 0.92d → 1.42d |  | baseline start 2022-11-18 → 2022-11-18 14:25; baseline finish 2022-11-25 → 2022-11-25 11:15 |
| 23 | Grafica pagine di menu | 2022-11-25 → 2022-11-18 11:15 (-7d) | 2022-12-02 → 2022-11-25 10:45 (-7d) |  | 1.79d → 2.29d |  | baseline start 2022-11-18 → 2022-11-18 14:25; baseline finish 2022-11-25 → 2022-11-25 11:15 |
| 24 | Vincita gioco e creazione nuova mappa | 2022-12-02 → 2022-11-25 10:45 (-7d) | 2022-12-02 → 2022-11-25 14:25 (-7d) |  | 1.79d → 2.29d |  | baseline start 2022-11-11 → 2022-11-11 10:45; baseline finish 2022-11-11 → 2022-11-11 14:25 |
| 25 | Game over | 2022-12-02 → 2022-11-25 09:30 (-7d) | 2022-12-02 → 2022-11-25 13:25 (-7d) |  | 0.92d → 1.42d |  | baseline start 2022-10-28 → 2022-10-28 13:55; baseline finish 2022-11-11 → 2022-11-11 08:30 |
| 26 | Pagina modifica parametri | 2022-12-02 → 2022-11-25 13:25 (-7d) | 2022-12-09 → 2022-12-09 08:30 |  | 0.92d → 1.42d |  | baseline start 2022-11-25 → 2022-11-25 11:15; baseline finish 2022-12-02 → 2022-12-02 14:25 |
| 27 | Salvataggio punteggio | 2022-12-09 → 2022-12-09 08:30 | 2022-12-16 → 2022-12-09 09:00 (-7d) |  | 1.1d → 1.6d |  | constraint start no earlier than 2022-09-16 → start no earlier than 2022-09-16 08:20; baseline start 2022-11-11 → 2022-11-11 14:25; baseline finish 2022-11-18 → 2022-11-18 14:25 |
| 28 | Imparare unity | 2022-09-30 → 2022-09-30 09:00 | 2022-12-16 → 2022-12-09 09:00 (-7d) | 10h → 9h | 0.17d → 0.29d |  | constraint start no earlier than 2022-09-29 → start no earlier than 2022-09-29 09:00; baseline start 2022-09-30 → 2022-09-30 09:00; baseline finish 2022-12-16 → 2022-12-16 09:00 |
| 29 | **Test** | 2022-12-09 → 2022-12-09 08:30 | 2022-12-16 → 2022-12-09 10:45 (-7d) |  | 0.92d → 1.42d |  | baseline start 2022-12-02 → 2022-12-02 14:25; baseline finish 2022-12-16 → 2022-12-16 09:30 |
| 30 | Test | 2022-12-09 → 2022-12-09 08:30 | 2022-12-16 → 2022-12-09 10:45 (-7d) |  | 0.92d → 1.42d |  | baseline start 2022-12-02 → 2022-12-02 14:25; baseline finish 2022-12-09 → 2022-12-09 10:15 |
| 31 | Risolvere problemi | 2022-12-16 → 2022-12-09 10:45 (-7d) | 2022-12-16 → 2022-12-09 10:45 (-7d) |  | 0.92d → 1.42d |  | baseline start 2022-12-09 → 2022-12-09 10:15; baseline finish 2022-12-16 → 2022-12-16 09:30 |
| 32 | Documentazione | 2022-09-30 → 2022-09-30 13:15 | 2022-12-23 → 2022-12-23 14:45 |  |  |  | constraint start no earlier than 2022-09-26 → start no earlier than 2022-09-26 09:00; baseline start 2022-09-30 → 2022-09-30 13:15; baseline finish 2022-12-23 → 2022-12-23 14:45 |
